How a schedule from MS Project changed from version to version. A marks actual dates.

## Version 1 (saved 2017-06-02)

Note of the change: Atualização dos dados dos CRUDs(elaborado testes) e documentação

| ID | WBS | Task | Duration | Start | Finish | Predecessors | Complete | Total float | Constraint |
| --- | --- | --- | --- | --- | --- | --- | --- | --- | --- |
| 1 | 1 | **Projeto Sistema de Integração Elétrica** | 34.12d? | 2017-05-11 09:00 A | 2017-06-28 10:00 |  | 28% | 0d |  |
| 2 | 1.1 | **Prospecção** | 2.62d | 2017-05-11 09:00 A | 2017-05-15 15:00 A |  | 100% |  |  |
| 3 | 1.1.1 | **Proposta Técnica** | 2.25d | 2017-05-11 09:00 A | 2017-05-15 11:00 A |  | 100% |  |  |
| 4 |  | Estudar Domínio de Aplicação | 0.12d | 2017-05-11 09:00 A | 2017-05-11 10:00 A |  | 100% |  |  |
| 5 |  | Reunir-se com o cliente | 0.5d | 2017-05-11 10:00 A | 2017-05-11 15:00 A | 4 | 100% |  |  |
| 6 |  | Redigir PTEC | 1d | 2017-05-12 09:00 A | 2017-05-12 18:00 A | 5 | 100% |  | start no earlier than 2017-05-12 09:00 |
| 7 |  | Revisar PTEC | 0.12d | 2017-05-15 09:00 A | 2017-05-15 10:00 A | 6 | 100% |  |  |
| 8 |  | Aprovar PTEC | 0.12d | 2017-05-15 10:00 A | 2017-05-15 11:00 A | 7 | 100% |  |  |
| 9 | 1.1.2 | **Est. Prel. Tam.** | 0.25d | 2017-05-15 09:00 A | 2017-05-15 11:00 A |  | 100% |  |  |
| 10 |  | Estimativa Tamanho do Projeto | 0.12d | 2017-05-15 09:00 A | 2017-05-15 10:00 A | 6 | 100% |  |  |
| 11 |  | Revisar Estimativas de Tamanho do Projeto | 0.12d | 2017-05-15 10:00 A | 2017-05-15 11:00 A | 10 | 100% |  |  |
| 12 | 1.1.3 | **Est. Prel. Cronograma e Orçamento** | 0.38d | 2017-05-15 11:00 A | 2017-05-15 15:00 A |  | 100% |  |  |
| 13 |  | Elaborar Cronograma e Orçamento Preliminares | 0.25d | 2017-05-15 11:00 A | 2017-05-15 14:00 A | 11 | 100% |  |  |
| 14 |  | Revisar Cronograma e Orçamento Preliminares | 0.12d | 2017-05-15 14:00 A | 2017-05-15 15:00 A | 13 | 100% |  |  |
| 15 | 1.2 | **Análise** | 10.12d? | 2017-05-17 10:00 A | 2017-05-31 11:00 A |  | 100% |  |  |
| 16 | 1.2.1 | **Documento de Requisitos** | 4.25d? | 2017-05-17 10:00 A | 2017-05-23 12:00 A |  | 100% |  |  |
| 17 |  | Reunir-se com o cliente | 0.5d | 2017-05-17 10:00 A | 2017-05-17 17:00 A | 8 | 100% |  |  |
| 18 |  | Elaborar Documento de Requisitos | 3d | 2017-05-17 17:00 A | 2017-05-22 17:00 A | 17 | 100% |  |  |
| 19 |  | Revisar Documento de Requisitos | 0.38d | 2017-05-22 17:00 A | 2017-05-23 11:00 A | 18 | 100% |  |  |
| 20 |  | Submeter Documento de Requisitos para Aprovação do Cliente | 0.12d? | 2017-05-23 11:00 A | 2017-05-23 12:00 A | 19 | 100% |  |  |
| 21 | 1.2.2 | **MRB** | 2d? | 2017-05-29 11:00 A | 2017-05-31 11:00 A |  | 100% |  |  |
| 22 |  | Elaborar MRB | 1d? | 2017-05-29 11:00 A | 2017-05-30 11:00 A | 20 | 100% |  |  |
| 23 |  | Revisar MRB | 1d? | 2017-05-30 11:00 A | 2017-05-31 11:00 A | 22 | 100% |  |  |
| 24 | 1.3 | **Projeto** | 2.42d | 2017-05-31 11:00 A | 2017-06-02 15:24 A |  | 100% |  |  |
| 25 | 1.3.1 | **Diagrama de Classes** | 1.3d | 2017-05-31 11:00 A | 2017-06-01 14:24 A |  | 100% |  |  |
| 26 |  | Elaborar Diagrama de Classes | 0.88d | 2017-05-31 11:00 A | 2017-06-01 10:00 A | 23 | 100% |  |  |
| 27 |  | Revisar Diagrama de Classes | 0.17d | 2017-06-01 10:00 A | 2017-06-01 11:24 A | 26 | 100% |  |  |
| 28 |  | Atualizar MRB | 0.25d | 2017-06-01 11:24 A | 2017-06-01 14:24 A | 27 | 100% |  |  |
| 29 | 1.3.2 | **Modelo Entidade Relacionamento** | 1.12d | 2017-06-01 14:24 A | 2017-06-02 15:24 A |  | 100% |  |  |
| 30 |  | Elaborar MER | 1d | 2017-06-01 14:24 A | 2017-06-02 14:24 A | 28 | 100% |  |  |
| 31 |  | Revisar MER | 0.12d | 2017-06-02 14:24 A | 2017-06-02 15:24 A | 30 | 100% |  |  |
| 32 | 1.4 | **Implementação e Teste** | 27.8d? | 2017-05-15 09:00 A | 2017-06-21 16:24 |  | 5% | 4.33d |  |
| 33 |  | Implantar o Mantis | 1d? | 2017-05-15 09:00 | 2017-05-15 18:00 |  |  | 31.12d |  |
| 34 |  | Criar o Git | 0.1d | 2017-06-02 15:24 A | 2017-06-02 16:12 |  | 63% | -0.1d |  |
| 35 | 1.4.3 | **Release 01** | 1.25d | 2017-06-02 15:24 A | 2017-06-05 17:24 |  | 69% | 0.12d |  |
| 36 | 1.4.3.1 | **Implementação** | 1d | 2017-06-02 15:24 A | 2017-06-05 15:24 | 34 | 75% | 0.38d |  |
| 37 |  | Implementar Banco de Dados | 1d | 2017-06-02 15:24 A | 2017-06-05 15:24 |  | 63% | 0.38d |  |
| 38 |  | Implementar RFS05 - Cadastrar Grupo Familiar | 0.25d | 2017-06-02 17:24 A | 2017-06-05 10:24 A | 37 | 100% |  |  |
| 39 |  | Implementar RFS06 - Consultar Grupo Familiar | 0.25d | 2017-06-02 15:24 A | 2017-06-02 17:24 A | 38 | 100% |  |  |
| 40 | 1.4.3.2 | **Teste** | 0.25d | 2017-06-05 15:24 A | 2017-06-05 17:24 |  | 50% | 0.12d |  |
| 41 |  | Testar RFS005 - Cadastrar Grupo Familiar | 0.25d | 2017-06-05 15:24 A | 2017-06-05 17:24 | 38 | 50% | 0.12d |  |
| 42 |  | Testar RFS006 - Consultar Grupo Familiar | 0.25d | 2017-06-05 15:24 A | 2017-06-05 17:24 | 39 | 50% | 0.12d |  |
| 43 | 1.4.4 | **Release 02** | 1.38d? | 2017-06-05 16:24 A | 2017-06-07 10:24 |  | 12% | 4.33d |  |
| 44 | 1.4.4.1 | **Implementação** | 1.12d? | 2017-06-05 16:24 A | 2017-06-06 17:24 |  | 14% | 4.33d |  |
| 45 |  | Implementar RFS007 - Alterar Grupo Familiar | 0.38d | 2017-06-05 17:24 | 2017-06-06 11:24 | 35 |  | 4.7d |  |
| 46 |  | Implementar RFS008 - Excluir Grupo Familiar | 0.25d | 2017-06-06 11:24 | 2017-06-06 14:24 | 45 |  | 4.7d |  |
| 47 |  | Implementar RFS001 - Cadastrar Usuário | 0.38d | 2017-06-05 16:24 A | 2017-06-06 10:24 | 35 | 67% | 0.75d |  |
| 48 |  | Implementar RFS002 - Consultar Usuário | 0.25d | 2017-06-06 10:24 | 2017-06-06 13:24 | 47 |  | 4.33d |  |
| 49 |  | Implementar RFS003 - Alterar Usuário | 0.25d | 2017-06-06 13:24 | 2017-06-06 15:24 | 48 |  | 4.33d |  |
| 50 |  | Implementar RFS004 - Excluir Usuário | 0.25d? | 2017-06-06 15:24 | 2017-06-06 17:24 | 49 |  | 4.33d |  |
| 51 | 1.4.4.2 | **Teste** | 0.88d? | 2017-06-06 11:24 A | 2017-06-07 10:24 |  | 8% | 4.33d |  |
| 52 |  | Testar RFS007 - Alterar Grupo Familiar | 0.25d | 2017-06-06 11:24 | 2017-06-06 14:24 | 45 |  | 4.95d |  |
| 53 |  | Testar RFS008 - Excluir Grupo Familiar | 0.25d | 2017-06-06 14:24 | 2017-06-06 16:24 | 46 |  | 4.7d |  |
| 54 |  | Testar RFS001 - Cadastrar Usuário | 0.25d | 2017-06-06 16:24 A | 2017-06-07 09:24 | 47 | 50% | 4.45d |  |
| 55 |  | Testar RFS002 - Consultar Usuário | 0.25d? | 2017-06-06 13:24 | 2017-06-06 15:24 | 48 |  | 4.83d |  |
| 56 |  | Testar RFS003 - Alterar Usuário | 0.25d | 2017-06-06 15:24 | 2017-06-06 17:24 | 49 |  | 4.58d |  |
| 57 |  | Testar RFS004 - Excluir Usuário | 0.25d | 2017-06-06 17:24 | 2017-06-07 10:24 | 50 |  | 4.33d |  |
| 58 | 1.4.5 | **Release 03** | 5.12d? | 2017-06-07 10:24 | 2017-06-14 11:24 | 43 |  | 4.33d |  |
| 59 | 1.4.5.1 | **Implementação** | 4d? | 2017-06-07 10:24 | 2017-06-13 10:24 |  |  | 4.33d |  |
| 60 |  | Implementar RFS009 - Cadastrar Oficina | 0.38d | 2017-06-07 10:24 | 2017-06-07 14:24 | 43 |  | 4.58d |  |
| 61 |  | Implementar RFS010 - Cadastrar Participante da Oficina | 1d? | 2017-06-07 14:24 | 2017-06-08 14:24 | 60 |  | 4.58d |  |
| 62 |  | Implementar RFS011 - Consultar Oficina | 0.38d | 2017-06-08 14:24 | 2017-06-08 17:24 | 61 |  | 4.58d |  |
| 63 |  | Implementar RFS012 - Alterar Oficinas | 1d? | 2017-06-08 17:24 | 2017-06-09 17:24 | 62 |  | 4.58d |  |
| 64 |  | Implementar RFS013 - Excluir Oficinas | 1d? | 2017-06-09 17:24 | 2017-06-12 17:24 | 63 |  | 4.58d |  |
| 65 |  | Implementar RFS014 - Cadastrar Serviços Ofertados | 1d? | 2017-06-07 10:24 | 2017-06-08 10:24 | 43 |  | 4.33d |  |
| 66 |  | Implementar RFS015 - Consultar Serviços Ofertados | 1d? | 2017-06-08 10:24 | 2017-06-09 10:24 | 65 |  | 4.33d |  |
| 67 |  | Implementar RFS016 - Alterar Serviços Ofertados | 1d? | 2017-06-09 10:24 | 2017-06-12 10:24 | 66 |  | 4.33d |  |
| 68 |  | Implementar RFS017 - Excluir Serviços Ofertados | 1d? | 2017-06-12 10:24 | 2017-06-13 10:24 | 67 |  | 4.33d |  |
| 69 | 1.4.5.2 | **Teste** | 4.75d? | 2017-06-07 14:24 | 2017-06-14 11:24 |  |  | 4.33d |  |
| 70 |  | Testar RFS009 - Cadastrar Oficinas | 0.25d | 2017-06-07 14:24 | 2017-06-07 16:24 | 60 |  | 8.82d |  |

| ID | WBS | Task | Duration | Start | Finish | Predecessors | Total float | Constraint |
| --- | --- | --- | --- | --- | --- | --- | --- | --- |
| 71 |  | Testar RFS010 - Cadastrar Participante da Oficina | 1.12d? | 2017-06-08 14:24 | 2017-06-09 15:24 | 61 | 6.95d |  |
| 72 |  | Testar RFS011 - Consultar Oficinas | 1.12d | 2017-06-08 17:24 | 2017-06-12 09:24 | 62 | 6.58d |  |
| 73 |  | Testar RFS012 - Alterar Oficinas | 1d? | 2017-06-09 17:24 | 2017-06-12 17:24 | 63 | 5.7d |  |
| 74 |  | Testar RFS013 - Excluir Oficinas | 1.12d? | 2017-06-12 17:24 | 2017-06-14 09:24 | 64 | 4.58d |  |
| 75 |  | Testar RFS014- Cadastrar Serviços Ofertados | 0.25d | 2017-06-08 10:24 | 2017-06-08 13:24 | 65 | 8.2d |  |
| 76 |  | Testar RFS015 - Consultar Serviços Ofertados | 0.25d | 2017-06-09 10:24 | 2017-06-09 13:24 | 66 | 7.2d |  |
| 77 |  | Testar RFS016 - Alterar Serviços Ofertados | 0.25d? | 2017-06-12 10:24 | 2017-06-12 13:24 | 67 | 6.2d |  |
| 78 |  | Testar RFS017 - Excluir Serviços Ofertados | 1.12d | 2017-06-13 10:24 | 2017-06-14 11:24 | 68 | 4.33d |  |
| 79 | 1.4.6 | **Release 04** | 5.5d? | 2017-06-14 11:24 | 2017-06-21 16:24 | 58 | 4.33d |  |
| 80 | 1.4.6.1 | **Implementação** | 5.25d? | 2017-06-14 11:24 | 2017-06-21 14:24 |  | 4.33d |  |
| 81 |  | Implementar RFC007 | 0.25d | 2017-06-14 11:24 | 2017-06-14 14:24 | 58 | 9.32d |  |
| 82 |  | Implementar RFC008 | 0.25d | 2017-06-21 11:24 | 2017-06-21 14:24 | 58 | 4.33d |  |
| 83 |  | Implementar RFC009 | 0.25d | 2017-06-14 11:24 | 2017-06-14 15:48 | 58 | 9.15d |  |
| 84 |  | Implementar RFC010 | 0.25d | 2017-06-14 11:24 | 2017-06-14 14:24 | 58 | 9.32d |  |
| 85 |  | Implementar RFC011 | 0.25d | 2017-06-14 11:24 | 2017-06-14 14:24 | 58 | 9.32d |  |
| 86 |  | Implementar REL001 | 1d? | 2017-06-14 11:24 | 2017-06-15 11:24 |  | 8.57d |  |
| 87 |  | Implementar REL002 | 1d? | 2017-06-14 11:24 | 2017-06-15 11:24 |  | 8.57d |  |
| 88 |  | Implementar REL003 | 1d? | 2017-06-14 11:24 | 2017-06-15 11:24 |  | 8.57d |  |
| 89 |  | Implementar REL004 | 1d? | 2017-06-14 11:24 | 2017-06-15 11:24 |  | 8.57d |  |
| 90 |  | Implementar REL005 | 1d? | 2017-06-14 11:24 | 2017-06-15 11:24 |  | 8.57d |  |
| 91 | 1.4.6.2 | **Teste** | 5.5d? | 2017-06-14 11:24 | 2017-06-21 16:24 |  | 4.33d |  |
| 92 |  | Testar RFC007 | 0.25d | 2017-06-21 14:24 | 2017-06-21 16:24 | 80 | 4.33d |  |
| 93 |  | Testar RFC008 | 0.25d | 2017-06-14 14:24 | 2017-06-14 16:24 | 81 | 9.32d |  |
| 94 |  | Testar RFC009 | 0.25d | 2017-06-21 14:24 | 2017-06-21 16:24 | 82 | 4.33d |  |
| 95 |  | Testar RFC010 | 0.25d | 2017-06-14 15:48 | 2017-06-14 17:48 | 83 | 9.15d |  |
| 96 |  | Testar RFC011 | 0.25d | 2017-06-14 14:24 | 2017-06-14 16:24 | 84 | 9.32d |  |
| 97 |  | Implementar REL001 | 1d? | 2017-06-14 11:24 | 2017-06-15 11:24 |  | 8.82d |  |
| 98 |  | Implementar REL002 | 1d? | 2017-06-14 11:24 | 2017-06-15 11:24 |  | 8.82d |  |
| 99 |  | Implementar REL003 | 1d? | 2017-06-14 11:24 | 2017-06-15 11:24 |  | 8.82d |  |
| 100 |  | Implementar REL004 | 1d? | 2017-06-14 11:24 | 2017-06-15 11:24 |  | 8.82d |  |
| 101 |  | Implementar REL005 | 1d? | 2017-06-14 11:24 | 2017-06-15 11:24 |  | 8.82d |  |
| 102 | 1.5 | **Monitoramento e Controle** | 0.88d | 2017-06-27 10:00 | 2017-06-27 18:00 |  | 0d |  |
| 103 |  | Acompanhar Projeto | 0.88d | 2017-06-27 10:00 | 2017-06-27 18:00 |  | 0d | finish no earlier than 2017-06-27 18:00 |
| 104 |  | Encerramento | 0.12d | 2017-06-28 09:00 | 2017-06-28 10:00 | 103 | 0d | start no earlier than 2017-06-28 09:00 |

## Version 2 (saved 2017-06-21)

Note of the change: Update Cronograma e Estimativa

Last finish 2017-06-28 → 2017-06-29 (+1d). Complete tasks 22 → 44.

Added:

| ID | Task | Duration | Start | Finish |
| --- | --- | --- | --- | --- |
| 68 | Controle de Mudanças | 0.62d? | 2017-05-15 09:00 A | 2017-05-15 15:00 A |

Removed: 47 Implementar RFS001 - Cadastrar Usuário; 48 Implementar RFS002 - Consultar Usuário; 49 Implementar RFS003 - Alterar Usuário; 50 Implementar RFS004 - Excluir Usuário; 54 Testar RFS001 - Cadastrar Usuário; 55 Testar RFS002 - Consultar Usuário; 56 Testar RFS003 - Alterar Usuário; 57 Testar RFS004 - Excluir Usuário; 62 Implementar RFS011 - Consultar Oficina; 63 Implementar RFS012 - Alterar Oficinas; 64 Implementar RFS013 - Excluir Oficinas; 65 Implementar RFS014 - Cadastrar Serviços Ofertados; 66 Implementar RFS015 - Consultar Serviços Ofertados; 67 Implementar RFS016 - Alterar Serviços Ofertados; 68 Implementar RFS017 - Excluir Serviços Ofertados; 72 Testar RFS011 - Consultar Oficinas; 73 Testar RFS012 - Alterar Oficinas; 74 Testar RFS013 - Excluir Oficinas; 75 Testar RFS014- Cadastrar Serviços Ofertados; 76 Testar RFS015 - Consultar Serviços Ofertados; 77 Testar RFS016 - Alterar Serviços Ofertados; 78 Testar RFS017 - Excluir Serviços Ofertados; 84 Implementar RFC010; 85 Implementar RFC011; 86 Implementar REL001; 87 Implementar REL002; 88 Implementar REL003; 89 Implementar REL004; 90 Implementar REL005; 95 Testar RFC010; 96 Testar RFC011; 97 Implementar REL001; 98 Implementar REL002; 99 Implementar REL003; 100 Implementar REL004; 101 Implementar REL005

Changed:

| ID | Task | Start | Finish | Duration | Complete | Total float | Predecessors | Other |
| --- | --- | --- | --- | --- | --- | --- | --- | --- |
| 1 | **Projeto Sistema de Integração Elétrica** | 2017-05-11 09:00 A → 2017-05-15 09:00 A (+4d) | 2017-06-28 10:00 → 2017-06-29 11:00 A (+1d) | 34.12d? → 33.25d? | 28% → 100% | 0d → none |  | baseline start 2017-05-11 09:00 → 2017-05-15 09:00; baseline finish 2017-07-03 18:00 → 2017-06-29 17:15 |
| 2 | **Prospecção** | 2017-05-11 09:00 A → 2017-05-15 09:00 A (+4d) | 2017-05-15 15:00 A → 2017-05-19 18:00 A (+4d) | 2.62d → 5d |  |  |  | baseline start 2017-05-11 09:00 → 2017-05-15 09:00; baseline finish 2017-05-17 10:00 → 2017-05-19 14:00 |
| 3 | **Proposta Técnica** | 2017-05-11 09:00 A → 2017-05-15 09:00 A (+4d) | 2017-05-15 11:00 A → 2017-05-19 15:00 A (+4d) | 2.25d → 4.62d |  |  |  | baseline start 2017-05-11 09:00 → 2017-05-15 09:00; baseline finish 2017-05-17 10:00 → 2017-05-19 11:30 |
| 4 | Estudar Domínio de Aplicação | 2017-05-11 09:00 A → 2017-05-15 09:00 A (+4d) | 2017-05-11 10:00 A → 2017-05-18 15:00 A (+7d) |  |  |  |  | baseline start 2017-05-11 09:00 → 2017-05-15 09:00; baseline finish 2017-05-11 10:00 → 2017-05-18 15:00 |
| 5 | Reunir-se com o cliente | 2017-05-11 10:00 A → 2017-05-18 15:00 A (+7d) | 2017-05-11 15:00 A → 2017-05-18 17:00 A (+7d) | 0.5d → 0.25d |  |  |  | baseline start 2017-05-11 10:00 → 2017-05-18 15:00; baseline finish 2017-05-11 15:00 → 2017-05-18 16:00 |
| 6 | Redigir PTEC | 2017-05-12 09:00 A → 2017-05-18 17:00 A (+6d) | 2017-05-12 18:00 A → 2017-05-19 12:00 A (+7d) | 1d → 0.5d |  |  |  | baseline start 2017-05-12 09:00 → 2017-05-18 16:00; baseline finish 2017-05-12 18:00 → 2017-05-19 09:30 |
| 7 | Revisar PTEC | 2017-05-15 09:00 A → 2017-05-19 13:00 A (+4d) | 2017-05-15 10:00 A → 2017-05-19 14:00 A (+4d) |  |  |  |  | baseline start 2017-05-15 09:00 → 2017-05-19 09:30; baseline finish 2017-05-15 10:00 → 2017-05-19 10:30 |
| 8 | Aprovar PTEC | 2017-05-15 10:00 A → 2017-05-19 14:00 A (+4d) | 2017-05-15 11:00 A → 2017-05-19 15:00 A (+4d) |  |  |  |  | baseline start 2017-05-15 10:00 → 2017-05-19 10:30; baseline finish 2017-05-17 10:00 → 2017-05-19 11:30 |
| 9 | **Est. Prel. Tam.** | 2017-05-15 09:00 A → 2017-05-19 13:00 A (+4d) | 2017-05-15 11:00 A → 2017-05-19 15:30 A (+4d) | 0.25d → 0.31d |  |  |  | baseline start 2017-05-15 09:00 → 2017-05-19 09:30; baseline finish 2017-05-15 11:00 → 2017-05-19 11:30 |
| 10 | Estimativa Tamanho do Projeto | 2017-05-15 09:00 A → 2017-05-19 13:00 A (+4d) | 2017-05-15 10:00 A → 2017-05-19 15:00 A (+4d) | 0.12d → 0.25d |  |  |  | baseline start 2017-05-15 09:00 → 2017-05-19 09:30; baseline finish 2017-05-15 10:00 → 2017-05-19 10:30 |
| 11 | Revisar Estimativas de Tamanho do Projeto | 2017-05-15 10:00 A → 2017-05-19 15:00 A (+4d) | 2017-05-15 11:00 A → 2017-05-19 15:30 A (+4d) | 0.12d → 0.06d |  |  |  | baseline start 2017-05-15 10:00 → 2017-05-19 10:30; baseline finish 2017-05-15 11:00 → 2017-05-19 11:30 |
| 12 | **Est. Prel. Cronograma e Orçamento** | 2017-05-15 11:00 A → 2017-05-19 15:30 A (+4d) | 2017-05-15 15:00 A → 2017-05-19 18:00 A (+4d) | 0.38d → 0.31d |  |  |  | baseline start 2017-05-15 11:00 → 2017-05-19 11:30; baseline finish 2017-05-15 15:00 → 2017-05-19 14:00 |
| 13 | Elaborar Cronograma e Orçamento Preliminares | 2017-05-15 11:00 A → 2017-05-19 15:30 A (+4d) | 2017-05-15 14:00 A → 2017-05-19 17:30 A (+4d) |  |  |  |  | baseline start 2017-05-15 11:00 → 2017-05-19 11:30; baseline finish 2017-05-15 14:00 → 2017-05-19 13:30 |
| 14 | Revisar Cronograma e Orçamento Preliminares | 2017-05-15 14:00 A → 2017-05-19 17:30 A (+4d) | 2017-05-15 15:00 A → 2017-05-19 18:00 A (+4d) | 0.12d → 0.06d |  |  |  | baseline start 2017-05-15 14:00 → 2017-05-19 13:30; baseline finish 2017-05-15 15:00 → 2017-05-19 14:00 |
| 15 | **Análise** | 2017-05-17 10:00 A → 2017-05-19 15:00 A (+2d) | 2017-05-31 11:00 A → 2017-05-29 11:40 A (-2d) | 10.12d? → 5.71d? |  |  |  | baseline start 2017-05-17 10:00 → 2017-05-19 11:30; baseline finish 2017-05-31 11:00 → 2017-05-26 13:10 |
| 16 | **Documento de Requisitos** | 2017-05-17 10:00 A → 2017-05-19 15:00 A (+2d) | 2017-05-23 12:00 A → 2017-05-26 15:00 A (+3d) | 4.25d? → 5d? |  |  |  | baseline start 2017-05-17 10:00 → 2017-05-19 11:30; baseline finish 2017-05-29 11:00 → 2017-05-25 15:30 |
| 17 | Reunir-se com o cliente | 2017-05-17 10:00 A → 2017-05-19 15:00 A (+2d) | 2017-05-17 17:00 A → 2017-05-22 12:00 A (+5d) |  |  |  |  | baseline start 2017-05-17 10:00 → 2017-05-19 11:30; baseline finish 2017-05-17 17:00 → 2017-05-22 09:30 |
| 18 | Elaborar Documento de Requisitos | 2017-05-17 17:00 A → 2017-05-22 13:00 A (+5d) | 2017-05-22 17:00 A → 2017-05-26 10:00 A (+4d) | 3d → 3.75d |  |  |  | baseline start 2017-05-17 17:00 → 2017-05-22 09:30; baseline finish 2017-05-22 17:00 → 2017-05-25 10:30 |
| 19 | Revisar Documento de Requisitos | 2017-05-22 17:00 A → 2017-05-26 10:00 A (+4d) | 2017-05-23 11:00 A → 2017-05-26 14:00 A (+3d) |  |  |  |  | baseline start 2017-05-22 17:00 → 2017-05-25 10:30; baseline finish 2017-05-23 11:00 → 2017-05-25 14:30 |
| 20 | Submeter Documento de Requisitos para Aprovação do Cliente | 2017-05-23 11:00 A → 2017-05-26 14:00 A (+3d) | 2017-05-23 12:00 A → 2017-05-26 15:00 A (+3d) |  |  |  |  | baseline start 2017-05-23 11:00 → 2017-05-25 14:30; baseline finish 2017-05-29 11:00 → 2017-05-25 15:30 |
| 21 | **MRB** | 2017-05-29 11:00 A → 2017-05-26 15:00 A (-3d) | 2017-05-31 11:00 A → 2017-05-29 11:40 A (-2d) | 2d? → 0.71d? |  |  |  | baseline start 2017-05-29 11:00 → 2017-05-25 15:30; baseline finish 2017-05-31 11:00 → 2017-05-26 13:10 |
| 22 | Elaborar MRB | 2017-05-29 11:00 A → 2017-05-26 15:00 A (-3d) | 2017-05-30 11:00 A → 2017-05-26 18:00 A (-4d) | 1d? → 0.38d? |  |  |  | baseline start 2017-05-29 11:00 → 2017-05-25 15:30; baseline finish 2017-05-30 11:00 → 2017-05-26 09:30 |
| 23 | Revisar MRB | 2017-05-30 11:00 A → 2017-05-29 09:00 A (-1d) | 2017-05-31 11:00 A → 2017-05-29 11:40 A (-2d) | 1d? → 0.33d? |  |  |  | baseline start 2017-05-30 11:00 → 2017-05-26 09:30; baseline finish 2017-05-31 11:00 → 2017-05-26 13:10 |
| 24 | **Projeto** | 2017-05-31 11:00 A → 2017-05-29 11:40 A (-2d) | 2017-06-02 15:24 A → 2017-05-30 13:55 A (-3d) | 2.42d → 1.16d |  |  |  | baseline start 2017-05-31 11:00 → 2017-05-26 13:10; baseline finish 2017-06-02 15:24 → 2017-05-29 14:25 |
| 25 | **Diagrama de Classes** | 2017-05-31 11:00 A → 2017-05-29 11:40 A (-2d) | 2017-06-01 14:24 A → 2017-05-29 17:40 A (-3d) | 1.3d → 0.62d |  |  |  | baseline start 2017-05-31 11:00 → 2017-05-26 13:10; baseline finish 2017-06-01 14:24 → 2017-05-29 09:10 |
| 26 | Elaborar Diagrama de Classes | 2017-05-31 11:00 A → 2017-05-29 11:40 A (-2d) | 2017-06-01 10:00 A → 2017-05-29 15:40 A (-3d) | 0.88d → 0.38d |  |  |  | baseline start 2017-05-31 11:00 → 2017-05-26 13:10; baseline finish 2017-06-01 10:00 → 2017-05-26 16:10 |
| 27 | Revisar Diagrama de Classes | 2017-06-01 10:00 A → 2017-05-29 15:40 A (-3d) | 2017-06-01 11:24 A → 2017-05-29 16:40 A (-3d) | 0.17d → 0.12d |  |  |  | baseline start 2017-06-01 10:00 → 2017-05-26 16:10; baseline finish 2017-06-01 11:24 → 2017-05-26 17:10 |
| 28 | Atualizar MRB | 2017-06-01 11:24 A → 2017-05-29 16:40 A (-3d) | 2017-06-01 14:24 A → 2017-05-29 17:40 A (-3d) | 0.25d → 0.12d |  |  |  | baseline start 2017-06-01 11:24 → 2017-05-26 17:10; baseline finish 2017-06-01 14:24 → 2017-05-29 09:10 |
| 29 | **Modelo Entidade Relacionamento** | 2017-06-01 14:24 A → 2017-05-29 17:40 A (-3d) | 2017-06-02 15:24 A → 2017-05-30 13:55 A (-3d) | 1.12d → 0.53d |  |  |  | baseline start 2017-06-01 14:24 → 2017-05-29 09:10; baseline finish 2017-06-02 15:24 → 2017-05-29 14:25 |
| 30 | Elaborar MER | 2017-06-01 14:24 A → 2017-05-29 17:40 A (-3d) | 2017-06-02 14:24 A → 2017-05-30 11:55 A (-3d) | 1d → 0.41d |  |  |  | baseline start 2017-06-01 14:24 → 2017-05-29 09:10; baseline finish 2017-06-02 14:24 → 2017-05-29 13:25 |
| 31 | Revisar MER | 2017-06-02 14:24 A → 2017-05-30 11:55 A (-3d) | 2017-06-02 15:24 A → 2017-05-30 13:55 A (-3d) |  |  |  |  | baseline start 2017-06-02 14:24 → 2017-05-29 13:25; baseline finish 2017-06-02 15:24 → 2017-05-29 14:25 |
| 32 | **Implementação e Teste** | 2017-05-15 09:00 A → 2017-05-30 13:55 A (+15d) | 2017-06-21 16:24 → 2017-06-02 11:45 A (-19d) | 27.8d? → 2.85d? | 5% → 100% | 4.33d → none |  | baseline start 2017-06-02 15:24 → 2017-05-29 14:25; baseline finish 2017-07-03 13:48 → 2017-06-13 09:37 |
| 33 | Implantar o Mantis | 2017-05-15 09:00 → 2017-05-30 13:55 A (+15d) | 2017-05-15 18:00 → 2017-05-31 13:55 A (+16d) |  | 0% → 100% | 31.12d → none | none → 24, 20 | baseline start none → 2017-05-29 14:25; baseline finish none → 2017-05-30 14:25 |
| 34 | Criar o Git | 2017-06-02 15:24 A → 2017-05-30 13:55 A (-3d) | 2017-06-02 16:12 → 2017-05-30 14:43 A (-3d) |  | 63% → 100% | -0.1d → none | none → 24, 20 | baseline start none → 2017-05-29 14:25; baseline finish none → 2017-05-29 15:13 |
| 35 | **Release 01** | 2017-06-02 15:24 A → 2017-05-30 14:43 A (-3d) | 2017-06-05 17:24 → 2017-05-31 15:36 A (-5d) | 1.25d → 1.11d | 69% → 100% | 0.12d → none |  | baseline start 2017-06-02 15:24 → 2017-05-29 15:13; baseline finish 2017-06-05 11:24 → 2017-06-08 14:13 |
| 36 | **Implementação** | 2017-06-02 15:24 A → 2017-05-30 14:43 A (-3d) | 2017-06-05 15:24 → 2017-05-31 09:21 A (-5d) | 1d → 0.45d | 75% → 100% | 0.38d → none |  | baseline start 2017-06-02 15:24 → 2017-05-29 15:13; baseline finish 2017-06-05 10:24 → 2017-06-02 10:13 |
| 37 | Implementar Banco de Dados | 2017-06-02 15:24 A → 2017-05-30 14:43 A (-3d) | 2017-06-05 15:24 → 2017-05-30 16:13 A (-6d) | 1d → 0.19d | 63% → 100% | 0.38d → none |  | baseline start 2017-06-02 15:24 → 2017-05-29 15:13; baseline finish 2017-06-02 17:24 → 2017-06-01 10:13 |
| 38 | Implementar RFC01 - Controlar Usuários e Perfis de Usuários | 2017-06-02 17:24 A → 2017-05-31 09:00 A (-2d) | 2017-06-05 10:24 A → 2017-05-31 09:21 A (-5d) | 0.25d → 0.04d |  |  |  | was named Implementar RFS05 - Cadastrar Grupo Familiar; baseline start 2017-06-02 17:24 → 2017-06-01 15:13; baseline finish 2017-06-05 10:24 → 2017-06-02 10:13 |
| 39 | Implementar RFC02 - Manter Grupo Familiar | 2017-06-02 15:24 A → 2017-05-30 16:13 A (-3d) | 2017-06-02 17:24 A → 2017-05-30 16:58 A (-3d) | 0.25d → 0.09d |  |  | 38 → 37 | was named Implementar RFS06 - Consultar Grupo Familiar; baseline start none → 2017-06-01 10:13; baseline finish none → 2017-06-01 15:13 |
| 40 | **Teste** | 2017-06-05 15:24 A → 2017-05-30 16:13 A (-6d) | 2017-06-05 17:24 → 2017-05-31 15:36 A (-5d) | 0.25d → 0.92d | 50% → 100% | 0.12d → none |  | baseline start 2017-06-05 10:24 → 2017-06-01 10:13; baseline finish 2017-06-05 11:24 → 2017-06-08 14:13 |
| 41 | Testar RFC01 - Controlar Usuários e Perfis de Usuários | 2017-06-05 15:24 A → 2017-05-30 16:13 A (-6d) | 2017-06-05 17:24 → 2017-05-30 17:13 A (-6d) | 0.25d → 0.12d | 50% → 100% | 0.12d → none | 38 → 37 | was named Testar RFS005 - Cadastrar Grupo Familiar; baseline start 2017-06-05 10:24 → 2017-06-01 10:13; baseline finish 2017-06-05 11:24 → 2017-06-06 17:13 |
| 42 | Testar RFC02 - Manter Grupo Familiar | 2017-06-05 15:24 A → 2017-05-31 14:21 A (-5d) | 2017-06-05 17:24 → 2017-05-31 15:36 A (-5d) | 0.25d → 0.16d | 50% → 100% | 0.12d → none | 39 → 38 | was named Testar RFS006 - Consultar Grupo Familiar; baseline start 2017-06-05 10:24 → 2017-06-02 15:13; baseline finish 2017-06-05 11:24 → 2017-06-08 14:13 |
| 43 | **Release 02** | 2017-06-05 16:24 A → 2017-05-31 09:21 A (-5d) | 2017-06-07 10:24 → 2017-05-31 15:51 A (-7d) | 1.38d? → 0.69d | 12% → 100% | 4.33d → none |  | baseline start 2017-06-05 11:24 → 2017-06-02 10:13; baseline finish 2017-06-05 15:24 → 2017-06-05 14:13 |
| 44 | **Implementação** | 2017-06-05 16:24 A → 2017-05-31 09:21 A (-5d) | 2017-06-06 17:24 → 2017-05-31 14:51 A (-6d) | 1.12d? → 0.56d | 14% → 100% | 4.33d → none |  | baseline start 2017-06-05 11:24 → 2017-06-02 10:13; baseline finish 2017-06-05 14:24 → 2017-06-05 10:13 |
| 45 | Implementar RFC03 - Controlar Oficinas | 2017-06-05 17:24 → 2017-05-31 14:21 A (-5d) | 2017-06-06 11:24 → 2017-05-31 14:51 A (-6d) | 0.38d → 0.06d | 0% → 100% | 4.7d → none | 35 → 36 | was named Implementar RFS007 - Alterar Grupo Familiar; baseline start 2017-06-05 11:24 → 2017-06-02 15:13; baseline finish 2017-06-05 14:24 → 2017-06-05 10:13 |
| 46 | Implementar RFC05 - Manter Agendamento | 2017-06-06 11:24 → 2017-05-31 09:21 A (-6d) | 2017-06-06 14:24 → 2017-05-31 09:51 A (-6d) | 0.25d → 0.06d | 0% → 100% | 4.7d → none | 45 → 36 | was named Implementar RFS008 - Excluir Grupo Familiar; baseline start 2017-06-05 11:24 → 2017-06-02 10:13; baseline finish 2017-06-05 14:24 → 2017-06-02 15:13 |
| 47 | **Teste** | 2017-06-06 11:24 A → 2017-05-31 09:51 A (-6d) | 2017-06-07 10:24 → 2017-05-31 15:51 A (-7d) | 0.88d? → 0.62d | 8% → 100% | 4.33d → none |  | baseline start 2017-06-05 14:24 → 2017-06-02 15:13; baseline finish 2017-06-05 15:24 → 2017-06-05 14:13 |
| 48 | Testar RFC03 - Controlar Oficinas | 2017-06-06 11:24 → 2017-05-31 14:51 A (-6d) | 2017-06-06 14:24 → 2017-05-31 15:51 A (-6d) | 0.25d → 0.12d | 0% → 100% | 4.95d → none |  | was named Testar RFS007 - Alterar Grupo Familiar; baseline start 2017-06-05 14:24 → 2017-06-05 10:13; baseline finish 2017-06-05 15:24 → 2017-06-05 14:13 |
| 49 | Testar RFC05 - Manter Agendamento | 2017-06-06 14:24 → 2017-05-31 09:51 A (-6d) | 2017-06-06 16:24 → 2017-05-31 10:51 A (-6d) | 0.25d → 0.12d | 0% → 100% | 4.7d → none |  | was named Testar RFS008 - Excluir Grupo Familiar; baseline start 2017-06-05 14:24 → 2017-06-02 15:13; baseline finish 2017-06-05 15:24 → 2017-06-05 09:13 |
| 50 | **Release 03** | 2017-06-07 10:24 → 2017-05-31 15:51 A (-7d) | 2017-06-14 11:24 → 2017-05-31 17:21 A (-14d) | 5.12d? → 0.19d? | 0% → 100% | 4.33d → none |  | baseline start 2017-06-05 15:24 → 2017-06-05 14:13; baseline finish 2017-06-20 17:24 → 2017-06-07 11:13 |
| 51 | **Implementação** | 2017-06-07 10:24 → 2017-05-31 15:51 A (-7d) | 2017-06-13 10:24 → 2017-05-31 16:21 A (-13d) | 4d? → 0.06d? | 0% → 100% | 4.33d → none |  | baseline start 2017-06-05 15:24 → 2017-06-05 14:13; baseline finish 2017-06-15 10:24 → 2017-06-06 09:13 |
| 52 | Implementar RFC06 - Manter Atendimento | 2017-06-07 10:24 → 2017-05-31 15:51 A (-7d) | 2017-06-07 14:24 → 2017-05-31 16:21 A (-7d) | 0.38d → 0.06d | 0% → 100% | 4.58d → none |  | was named Implementar RFS009 - Cadastrar Oficina; baseline start 2017-06-05 15:24 → 2017-06-05 14:13; baseline finish 2017-06-05 17:24 → 2017-06-06 09:13 |
| 53 | Implementar RFC07 - Manter Diagnóstico | 2017-06-07 14:24 → 2017-05-31 15:51 A (-7d) | 2017-06-08 14:24 → 2017-05-31 16:21 A (-8d) | 1d? → 0.06d? | 0% → 100% | 4.58d → none | 52 → 43 | was named Implementar RFS010 - Cadastrar Participante da Oficina; baseline start none → 2017-06-05 14:13; baseline finish none → 2017-06-06 09:13 |
| 54 | **Teste** | 2017-06-07 14:24 → 2017-05-31 16:21 A (-7d) | 2017-06-14 11:24 → 2017-05-31 17:21 A (-14d) | 4.75d? → 0.12d? | 0% → 100% | 4.33d → none |  | baseline start 2017-06-15 10:24 → 2017-06-06 09:13; baseline finish 2017-06-20 17:24 → 2017-06-07 11:13 |
| 55 | Testar RFC06 - Manter Atendimento | 2017-06-07 14:24 → 2017-05-31 16:21 A (-7d) | 2017-06-07 16:24 → 2017-05-31 17:21 A (-7d) | 0.25d → 0.12d | 0% → 100% | 8.82d → none |  | was named Testar RFS009 - Cadastrar Oficinas; baseline start none → 2017-06-06 09:13; baseline finish none → 2017-06-06 13:13 |
| 56 | Testar RFC07 - Manter Diagnóstico | 2017-06-08 14:24 → 2017-05-31 16:21 A (-8d) | 2017-06-09 15:24 → 2017-05-31 17:21 A (-9d) | 1.12d? → 0.12d? | 0% → 100% | 6.95d → none |  | was named Testar RFS010 - Cadastrar Participante da Oficina; baseline start none → 2017-06-06 09:13; baseline finish none → 2017-06-07 11:13 |
| 57 | **Release 04** | 2017-06-14 11:24 → 2017-05-31 17:21 A (-14d) | 2017-06-21 16:24 → 2017-06-02 11:45 A (-19d) | 5.5d? → 1.43d | 0% → 100% | 4.33d → none | 50 → none | baseline start 2017-06-20 17:24 → 2017-06-07 11:13; baseline finish 2017-07-03 13:48 → 2017-06-13 09:37 |
| 58 | **Implementação** | 2017-06-14 11:24 → 2017-05-31 17:21 A (-14d) | 2017-06-21 14:24 → 2017-06-02 09:45 A (-19d) | 5.25d? → 1.18d | 0% → 100% | 4.33d → none |  | baseline start 2017-06-20 17:24 → 2017-06-07 11:13; baseline finish 2017-06-29 09:48 → 2017-06-12 09:37 |
| 59 | Implementar RFC08 - Manter Assistente Social | 2017-06-14 11:24 → 2017-05-31 17:21 A (-14d) | 2017-06-14 14:24 → 2017-05-31 17:51 A (-14d) | 0.25d → 0.06d | 0% → 100% | 9.32d → none |  | was named Implementar RFC007; baseline start 2017-06-20 17:24 → 2017-06-07 11:13; baseline finish 2017-06-21 10:24 → 2017-06-07 16:13 |
| 60 | Implementar RFC09 - Manter Avaliações | 2017-06-21 11:24 → 2017-05-31 17:21 A (-21d) | 2017-06-21 14:24 → 2017-05-31 17:51 A (-21d) | 0.25d → 0.06d | 0% → 100% | 4.33d → none |  | was named Implementar RFC008; baseline start 2017-06-27 17:24 → 2017-06-07 11:13; baseline finish 2017-06-28 10:24 → 2017-06-07 16:13 |
| 61 | Implementar RFC04 - Relatórios | 2017-06-14 11:24 → 2017-05-31 17:21 A (-14d) | 2017-06-14 15:48 → 2017-06-02 09:45 A (-12d) | 0.25d → 1d | 0% → 100% | 9.15d → none |  | was named Implementar RFC009; baseline start 2017-06-20 17:24 → 2017-06-07 11:13; baseline finish 2017-06-29 09:48 → 2017-06-12 09:37 |
| 62 | **Teste** | 2017-06-14 11:24 → 2017-05-31 17:51 A (-14d) | 2017-06-21 16:24 → 2017-06-02 11:45 A (-19d) | 5.5d? → 1.36d | 0% → 100% | 4.33d → none |  | baseline start 2017-06-29 09:48 → 2017-06-07 16:13; baseline finish 2017-07-03 13:48 → 2017-06-13 09:37 |
| 63 | Testar RFC08 - Manter Assistente Social | 2017-06-21 14:24 → 2017-05-31 17:51 A (-21d) | 2017-06-21 16:24 → 2017-06-01 09:51 A (-20d) | 0.25d → 0.12d | 0% → 100% | 4.33d → none | 58 → 59 | was named Testar RFC007; baseline start 2017-06-29 09:48 → 2017-06-07 16:13; baseline finish 2017-06-29 10:48 → 2017-06-08 10:13 |
| 64 | Testar RFC09 - Manter Avaliações | 2017-06-14 14:24 → 2017-05-31 17:51 A (-14d) | 2017-06-14 16:24 → 2017-06-01 09:51 A (-13d) | 0.25d → 0.12d | 0% → 100% | 9.32d → none | 59 → 60 | was named Testar RFC008; baseline start 2017-06-29 09:48 → 2017-06-07 16:13; baseline finish 2017-06-29 10:48 → 2017-06-08 10:13 |
| 65 | Testar RFC04 - Relatórios | 2017-06-21 14:24 → 2017-06-02 09:45 A (-19d) | 2017-06-21 16:24 → 2017-06-02 11:45 A (-19d) |  | 0% → 100% | 4.33d → none | 60 → 61 | was named Testar RFC009; baseline start 2017-06-29 09:48 → 2017-06-12 09:37; baseline finish 2017-07-03 09:48 → 2017-06-13 09:37 |
| 66 | **Planejamento, Monitoramento e Controle** | 2017-06-27 10:00 → 2017-05-15 09:00 A (-43d) | 2017-06-27 18:00 A | 0.88d → 32d? | 0% → 100% | 0d → none |  | was named Monitoramento e Controle; baseline start 2017-05-11 09:00 → 2017-05-15 09:00 |
| 67 | Acompanhar Projeto | 2017-06-27 10:00 → 2017-06-26 16:00 A (-1d) | 2017-06-27 18:00 A | 0.88d → 1.25d | 0% → 100% | 0d → none |  | baseline start 2017-06-26 16:00 → 2017-06-27 13:00 |
| 69 | Encerramento | 2017-06-28 09:00 A | 2017-06-28 10:00 → 2017-06-29 11:00 A (+1d) | 0.12d → 1.25d | 0% → 100% | 0d → none | 67 → 57 | baseline finish 2017-07-03 18:00 → 2017-06-29 17:15 |
